# 版本开发计划

How a schedule from MS Project changed from version to version. A marks actual dates.

## Version 1 (saved 2020-06-01)

Note of the change: Create PC端版本开发计划.mpp

| ID | WBS | Task | Duration | Start | Finish | Predecessors | Total float | Constraint |
| --- | --- | --- | --- | --- | --- | --- | --- | --- |
| 1 | 1 | **扫描软件专题** | 11d | 2020-06-01 | 2020-06-15 |  | 4d |  |
| 2 |  | 视野太多时退出视野 | 2d | 2020-06-01 | 2020-06-02 |  | 4d |  |
| 3 |  | 扫描后上载的解耦 | 3d | 2020-06-03 | 2020-06-05 | 2 | 4d |  |
| 4 |  | 通过预览图识别玻片位置异常 | 4d | 2020-06-08 | 2020-06-11 | 3 | 4d |  |
| 5 |  | 玻片质量预判方案 | 3d | 2020-06-01 | 2020-06-03 |  | 5d |  |
| 6 |  | 玻片图像纠偏方案 | 3d | 2020-06-04 | 2020-06-08 | 5 | 5d |  |
| 7 |  | 10倍图扫描优化可行性分析 | 2d | 2020-06-12 | 2020-06-15 | 4 | 4d |  |
| 9 | 2 | **扫描分析客户端软件** | 10d | 2020-06-01 | 2020-06-12 |  | 5d |  |
| 10 |  | 右边图像显示区域支持细胞操作 | 5d | 2020-06-01 | 2020-06-05 |  | 1d | finish no earlier than 2020-06-05 |
| 11 |  | 巨核细胞计数功能 | 5d | 2020-06-08 | 2020-06-12 | 10 | 5d |  |
| 13 | 3 | **专题工作** | 15d | 2020-06-01 | 2020-06-19 |  | 0d |  |
| 14 | 3.1 | **扫描后长时间看不到结果优化** | 10d | 2020-06-01 | 2020-06-12 |  | 5d |  |
| 15 |  | 方案确定 | 2d | 2020-06-01 | 2020-06-02 |  | 5d |  |
| 16 |  | 方案落实(金域演示前合入) | 8d | 2020-06-03 | 2020-06-12 | 15 | 1d |  |
| 19 | 3.2 | **其他任务** | 7d | 2020-06-01 | 2020-06-09 |  | 8d |  |
| 20 |  | 模型检测程序 | 5d | 2020-06-01 | 2020-06-05 |  | 10d |  |
| 21 |  | 金域玻片标记训练 | 5d | 2020-06-03 | 2020-06-09 |  | 8d | start no earlier than 2020-06-03 |
| 23 | 3.3 | **系统测试** | 10d | 2020-06-08 | 2020-06-19 |  | 0d |  |
| 24 |  | 6-8版本系统测试 | 5d | 2020-06-08 | 2020-06-12 | 30 | 5d |  |
| 25 |  | 6-15版本系统测试 | 5d | 2020-06-15 | 2020-06-19 | 31 | 0d |  |
| 29 | 3.3.3 | **版本发布计划** | 5d | 2020-06-08 | 2020-06-15 |  | 0d |  |
| 30 |  | 6月8日版本(金域演示) | 0d | 2020-06-08 | 2020-06-08 | 2, 3, 10 | 5d | start no earlier than 2020-06-08 |
| 31 |  | 6月15日版本 | 0d | 2020-06-15 | 2020-06-15 |  | 0d | start no earlier than 2020-06-15 |

## Version 2 (saved 2020-06-02)

Note of the change: 下班更新

Last finish stays 2020-06-19.

Added:

| ID | Task | Duration | Start | Finish | Resources |
| --- | --- | --- | --- | --- | --- |
| 8 | 送片机接口变更 | 2d | 2020-06-01 | 2020-06-02 | 高晓斌 |

## Version 3 (saved 2020-06-26)

Note of the change: 更新计划

Last finish 2020-06-19 → 2020-06-30 (+11d). Complete tasks 0 → 31.

Added:

| ID | Task | Duration | Start | Finish | Predecessors | Constraint | Resources |
| --- | --- | --- | --- | --- | --- | --- | --- |
| 12 | AnalyzeWindow中增加状态栏 | 2d | 2020-06-05 A | 2020-06-08 A |  | start no earlier than 2020-06-05 | 薛松 |
| 14 | **玻片数据加载性能优化** | 10d | 2020-06-15 A | 2020-06-26 A |  |  |  |
| 15 | 延迟下载细胞轮廓 | 1d | 2020-06-15 A | 2020-06-15 A |  | start no earlier than 2020-06-15 | 薛松 |
| 16 | 以并行方式下载视野缩略图 | 1d | 2020-06-16 A | 2020-06-16 A | 15 | start no earlier than 2020-06-15 | 薛松 |
| 17 | 以并行方式下载细胞信息 | 1d | 2020-06-17 A | 2020-06-17 A | 16 |  | 薛松 |
| 18 | 以并行方式下载细胞图片 | 1d | 2020-06-17 A | 2020-06-17 A | 17 |  | 薛松 |
| 19 | Cache视野缩略图 | 0.5d | 2020-06-19 A | 2020-06-19 A | 18 |  | 薛松 |
| 20 | Cache细胞信息 | 0.5d | 2020-06-19 A | 2020-06-19 A | 19 |  | 薛松 |
| 21 | Cache细胞图片 | 0.5d | 2020-06-22 A | 2020-06-22 A | 20 |  | 薛松 |
| 22 | Cache细胞轮廓 | 0.5d | 2020-06-22 A | 2020-06-22 A | 21 |  | 薛松 |
| 23 | 【紧急】解决Qt5.12.0下面只有一个元素时map()挂死的问题 | 3d | 2020-06-21 A | 2020-06-24 A |  | start no earlier than 2020-06-22 | 薛松 |
| 24 | 支持一次性下载Slide的细胞信息的新接口 | 1d | 2020-06-26 A | 2020-06-26 A | 23 |  | 薛松 |
| 25 | 新增未保存的细胞特别标出 | 1d | 2020-06-17 A | 2020-06-17 A |  | start no earlier than 2020-06-17 | 薛松 |
| 26 | **工程切换到Qt5.14.2** | 1d? | 2020-06-22 A | 2020-06-22 A |  |  |  |
| 27 | 工程切换到Qt5.14.2 | 1d? | 2020-06-22 A | 2020-06-22 A |  | start no earlier than 2020-06-22 |  |
| 28 | 安装包切换到Qt5.14.2 | 1d? | 2020-06-22 A | 2020-06-22 A |  | start no earlier than 2020-06-22 |  |
| 29 | 【紧急】解决在外周血时保存结果时崩溃的问题 | 3d | 2020-06-18 A | 2020-06-22 A |  | start no earlier than 2020-06-18 | 薛松 |
| 30 | **支持在百倍图中标注和修改巨核细胞** | 0d | 2020-06-21 A | 2020-06-21 A |  |  | 薛松 |
| 31 | 细胞上下文菜单中同时显示白细胞和巨核分类 | 0d | 2020-06-21 A | 2020-06-21 A |  | start no earlier than 2020-06-19 | 薛松 |
| 32 | 调整描细胞轮廓时的缩放比例, 让巨核能画下 | 0d | 2020-06-21 A | 2020-06-21 A | 31 | start no earlier than 2020-06-19 | 薛松 |
| 33 | 工程重构, 按组件分目录 | 1d | 2020-06-24 A | 2020-06-24 A |  |  | 薛松 |
| 34 | AnalyzeWindow加载时在SplashScreen中显示进度条 | 1d | 2020-06-26 A | 2020-06-26 A |  | start no earlier than 2020-06-26 | 薛松 |
| 35 | 重新实现About对话框 | 1d | 2020-06-26 A | 2020-06-26 | 34 | start no earlier than 2020-06-26 |  |
| 36 | 在视野中双击细胞跳转到分类的位置 | 2d | 2020-06-29 | 2020-06-30 | 35 |  |  |
| 37 | **【临床】和扫描端深度融合** | 2d | 2020-06-29 | 2020-06-30 |  |  |  |
| 38 | 通过扫描端启动， 跳过数据库连接界面直接显示玻片列表 | 2d | 2020-06-29 | 2020-06-30 | 35 |  |  |
| 39 | **成熟红细胞分类显示** | 1d? | 2020-06-01 | 2020-06-01 |  |  |  |
| 40 | 支持红细胞扫描视野显示 | 1d? | 2020-06-01 | 2020-06-01 |  |  |  |
| 41 | 支持红细胞分类 | 1d? | 2020-06-01 | 2020-06-01 |  |  |  |
| 42 | 显示图像缩放比例 | 1d? | 2020-06-01 | 2020-06-01 |  |  |  |
| 43 | 支持比例尺显示 | 1d? | 2020-06-01 | 2020-06-01 |  |  |  |
| 44 | 支持CatalogView中的细胞拖放 | 1d? | 2020-06-01 | 2020-06-01 |  |  |  |
| 45 | 支持从ImageView向CatalogView中的拖放 | 1d? | 2020-06-01 | 2020-06-01 |  |  |  |
| 46 | <新任务> | 1d? | 2020-06-01 | 2020-06-01 |  |  |  |
| 47 | <新任务> | 1d? | 2020-06-01 | 2020-06-01 |  |  |  |
| 48 | <新任务> | 1d? | 2020-06-01 | 2020-06-01 |  |  |  |

Changed:

| ID | Task | Start | Finish | Duration | Complete | Total float | Other |
| --- | --- | --- | --- | --- | --- | --- | --- |
| 1 | **扫描软件专题** | 2020-06-01 A |  |  | 0% → 58% | 4d → 11d | baseline start none → 2020-06-01; baseline finish none → 2020-06-15 |
| 2 | 视野太多时退出视野 | 2020-06-01 A | 2020-06-02 A |  | 0% → 100% | 4d → none | baseline start none → 2020-06-01; baseline finish none → 2020-06-02 |
| 3 | 扫描后上载的解耦 | 2020-06-03 A | 2020-06-05 A |  | 0% → 100% | 4d → none | baseline start none → 2020-06-03; baseline finish none → 2020-06-05 |
| 4 | 通过预览图识别玻片位置异常 | 2020-06-08 A | 2020-06-11 A |  | 0% → 100% | 4d → none | baseline start none → 2020-06-08; baseline finish none → 2020-06-11 |
| 5 | 玻片质量预判方案 |  |  |  |  | 5d → 16d | baseline start none → 2020-06-01; baseline finish none → 2020-06-03 |
| 6 | 玻片图像纠偏方案 |  |  |  |  | 5d → 16d | baseline start none → 2020-06-04; baseline finish none → 2020-06-08 |
| 7 | 10倍图扫描优化可行性分析 |  |  |  |  | 4d → 11d | baseline start none → 2020-06-12; baseline finish none → 2020-06-15 |
| 8 | 送片机接口变更 | 2020-06-01 A | 2020-06-02 A |  | 0% → 100% | 13d → none | baseline start none → 2020-06-01; baseline finish none → 2020-06-02 |
| 10 | **扫描分析客户端软件** | 2020-06-01 A | 2020-06-12 → 2020-06-30 (+18d) | 10d → 22d? | 0% → 68% | 5d → 0d | baseline start none → 2020-06-01; baseline finish none → 2020-06-30 |
| 11 | 右边图像显示区域支持细胞操作 | 2020-06-01 A | 2020-06-05 A |  | 0% → 100% | 5d → none | baseline start none → 2020-06-01; baseline finish none → 2020-06-05 |
| 13 | 巨核细胞计数功能 | 2020-06-08 A | 2020-06-12 A |  | 0% → 100% | 5d → none | baseline start none → 2020-06-08; baseline finish none → 2020-06-12 |
| 50 | **专题工作** | 2020-06-01 A |  |  | 0% → 67% | 0d → 7d | baseline start none → 2020-06-01; baseline finish none → 2020-06-19 |
| 51 | **扫描后长时间看不到结果优化** | 2020-06-01 A | 2020-06-12 A |  | 0% → 100% | 5d → none | baseline start none → 2020-06-01; baseline finish none → 2020-06-12 |
| 52 | 方案确定 | 2020-06-01 A | 2020-06-02 A |  | 0% → 100% | 5d → none | baseline start none → 2020-06-01; baseline finish none → 2020-06-02 |
| 53 | 方案落实(金域演示前合入) | 2020-06-03 A | 2020-06-12 A |  | 0% → 100% | 5d → none | baseline start none → 2020-06-03; baseline finish none → 2020-06-12 |
| 56 | **其他任务** |  |  |  |  | 8d → 15d | baseline start none → 2020-06-01; baseline finish none → 2020-06-09 |
| 57 | 模型检测程序 |  |  |  |  | 10d → 17d | baseline start none → 2020-06-01; baseline finish none → 2020-06-05 |
| 58 | 金域玻片标记训练 |  |  |  |  | 8d → 15d | baseline start none → 2020-06-03; baseline finish none → 2020-06-09 |
| 60 | **系统测试** | 2020-06-08 A | 2020-06-19 A |  | 0% → 100% | 0d → none | baseline start none → 2020-06-08; baseline finish none → 2020-06-19 |
| 61 | 6-8版本系统测试 | 2020-06-08 A | 2020-06-12 A |  | 0% → 100% | 5d → none | baseline start none → 2020-06-08; baseline finish none → 2020-06-12 |
| 62 | 6-15版本系统测试 | 2020-06-15 A | 2020-06-19 A |  | 0% → 100% | 0d → none | baseline start none → 2020-06-15; baseline finish none → 2020-06-19 |
| 66 | **版本发布计划** | 2020-06-08 A | 2020-06-15 A |  | 0% → 100% | 0d → none | baseline start none → 2020-06-08; baseline finish none → 2020-06-15 |
| 67 | 6月8日版本(金域演示) | 2020-06-08 A | 2020-06-08 A |  | 0% → 100% | 5d → none | baseline start none → 2020-06-08; baseline finish none → 2020-06-08 |
| 68 | 6月15日版本 | 2020-06-15 A | 2020-06-15 A |  | 0% → 100% | 0d → none | baseline start none → 2020-06-15; baseline finish none → 2020-06-15 |
