# PC端版本计划.202006

How a schedule from MS Project changed from version to version. A marks actual dates.

## Version 1 (saved 2020-06-27, file PC端版本计划.202006.mpp)

Note of the change: 更新计划

| ID | WBS | Task | Duration | Start | Finish | Predecessors | Complete | Total float | Constraint |
| --- | --- | --- | --- | --- | --- | --- | --- | --- | --- |
| 1 | 1 | **六月份工作计划** | 21d? | 2020-06-01 A | 2020-06-29 |  | 94% | 23d |  |
| 2 | 1.1 | **通用优化** | 18d | 2020-06-04 A | 2020-06-29 |  | 75% | 23d |  |
| 3 |  | 增加日志机制 | 2d | 2020-06-04 A | 2020-06-05 A | 9 | 100% |  |  |
| 4 |  | 为APP增加图标 | 1d | 2020-06-18 A | 2020-06-18 A | 3 | 100% |  |  |
| 5 |  | connection 标签中显示port | 1d | 2020-06-22 A | 2020-06-22 A | 4 | 100% |  |  |
| 6 |  | 重构工程目录 | 1d | 2020-06-23 A | 2020-06-23 A | 5 | 100% |  |  |
| 7 |  | AnalyzeWindow的Splash中显示进度条 | 1d | 2020-06-26 A | 2020-06-26 A | 6 | 100% |  |  |
| 8 |  | 实现版本对话框 | 2d | 2020-06-26 A | 2020-06-29 | 7 |  | 23d |  |
| 9 | 1.2 | **Image页面中支持对细胞的操作** | 13d? | 2020-06-01 A | 2020-06-18 |  | 83% | 30d |  |
| 10 |  | 控制是否显示细胞 | 1d? | 2020-06-03 A | 2020-06-03 A |  | 100% |  | start no earlier than 2020-06-03 |
| 11 |  | 增加右边的细胞上下文菜单 | 0d | 2020-06-01 A | 2020-06-01 A | 10 | 100% |  |  |
| 12 |  | 重新梳理事件传递流程, 并文档化 | 6d | 2020-06-02 A | 2020-06-09 A | 11 | 100% |  |  |
| 13 |  | toolkit的同步显示 | 0d? | 2020-06-04 A | 2020-06-04 A | 12 | 100% |  |  |
| 14 |  | 【缺陷修改】解决CatalogView中删除细胞后在ImageView中不能同步更新的问题 | 2d | 2020-06-03 A | 2020-06-04 A |  | 100% |  | start no earlier than 2020-06-03 |
| 15 |  | 【BUG】解决细胞个数和比例显示错误的问题 | 0d | 2020-06-02 A | 2020-06-02 A | 14 | 100% |  |  |
| 16 |  | 细胞标题上显示object_id | 1d? | 2020-06-16 A | 2020-06-16 A | 13 | 100% |  |  |
| 17 |  | CatalogView中双击细胞在ImageView中跳转 | 1d | 2020-06-17 | 2020-06-17 | 16 |  | 30d |  |
| 18 |  | ImageView中双击细胞在CatalogView中跳转 | 1d | 2020-06-18 | 2020-06-18 | 17 |  | 30d |  |
| 19 |  | 未保存的细胞特别标出 | 0d? | 2020-06-13 A | 2020-06-14 A |  | 100% |  |  |
| 20 | 1.3 | **AnalyzeWindow中增加状态栏** | 1d | 2020-06-13 A | 2020-06-15 A |  | 100% |  |  |
| 21 |  | 增加状态栏机制 | 0d | 2020-06-13 A | 2020-06-13 A |  | 100% |  | start no earlier than 2020-06-09 |
| 22 |  | 在状态栏中显示处理信息 | 0d | 2020-06-13 A | 2020-06-13 A | 21 | 100% |  |  |
| 23 |  | 在状态栏中显示玻片信息 | 0d | 2020-06-14 A | 2020-06-14 A | 22 | 100% |  |  |
| 24 |  | 在状态栏中显示视野信息 | 1d | 2020-06-15 A | 2020-06-15 A | 23 | 100% |  |  |
| 25 |  | 在状态栏中显示细胞个数 | 0d | 2020-06-14 A | 2020-06-14 A | 24 | 100% |  |  |
| 27 | 1.4 | **支持巨核细胞** | 16d | 2020-06-01 A | 2020-06-22 A |  | 100% |  |  |
| 28 |  | 支持骨髓显示多视野 | 1d | 2020-06-02 A | 2020-06-02 A |  | 100% |  | start no earlier than 2020-06-08 |
| 29 |  | 重构代码, 合并Gallery和Tile视图 | 4d | 2020-06-01 A | 2020-06-04 A | 28 | 100% |  | start no earlier than 2020-06-08 |
| 30 |  | 重构代码, 合并两个Provider | 3d | 2020-06-02 A | 2020-06-04 A | 29 | 100% |  |  |
| 31 |  | 重构代码, 合并两个GraphicsItem | 3d | 2020-06-03 A | 2020-06-05 A | 30 | 100% |  |  |
| 32 |  | 数据库格式变更的适配性工作 | 2d | 2020-06-09 A | 2020-06-10 A | 31 | 100% |  |  |
| 33 |  | 要求黄海在Action中增加path | 1d | 2020-06-16 A | 2020-06-16 A | 32 | 100% |  |  |
| 34 |  | 分类字典中增加family字段后的适配以及上下文菜单 | 2d | 2020-06-11 A | 2020-06-12 A | 32 | 100% |  |  |
| 35 |  | 细胞上下文菜单中同时显示白细胞和巨核的分类 | 1d | 2020-06-21 A | 2020-06-22 A | 34 | 100% |  |  |
| 36 |  | 新增巨核细胞时, ImageView的缩放比例改为0.8 | 2d | 2020-06-17 A | 2020-06-18 A | 35 | 100% |  |  |
| 38 | 1.5 | **性能优化** | 10d | 2020-06-15 A | 2020-06-26 A |  | 100% |  |  |
| 39 |  | 延迟下载action的轮廓数据 | 1d | 2020-06-16 A | 2020-06-16 A |  | 100% |  | start no earlier than 2020-06-15 |
| 40 |  | 使用outlines | 1d | 2020-06-16 A | 2020-06-16 A | 39 | 100% |  |  |
| 41 |  | 增加是否显示细胞轮廓的工具栏 | 1d | 2020-06-16 A | 2020-06-16 A | 40 | 100% |  |  |
| 42 |  | CellGraphicsItem的paint触发轮廓下载 | 2d | 2020-06-16 A | 2020-06-17 A | 41 | 100% |  |  |
| 43 | 1.5.5 | **重构getTaskResult()函数** | 10d | 2020-06-15 A | 2020-06-26 A |  | 100% |  |  |
| 44 |  | 使用blockmap()来并发下载视野预览图 | 2d | 2020-06-15 A | 2020-06-16 A | 42 | 100% |  |  |
| 45 |  | 使用blockmapped()来并发下载细胞信息 | 2d | 2020-06-15 A | 2020-06-16 A | 44 | 100% |  |  |
| 46 |  | 使用blockmap()来并发下载细胞图 | 2d | 2020-06-15 A | 2020-06-16 A | 45 | 100% |  |  |
| 47 |  | 视野预览图大图和瓦片\支持cache | 1d | 2020-06-17 A | 2020-06-17 A | 46 | 100% |  |  |
| 48 |  | 细胞图支持cache | 1d | 2020-06-17 A | 2020-06-17 A | 47 | 100% |  |  |
| 49 |  | 细胞轮廓支持cache | 1d | 2020-06-17 A | 2020-06-17 A | 48 | 100% |  |  |
| 50 |  | 支持新增的批量下载玻片细胞的新接口, 自动选择 | 1d | 2020-06-26 A | 2020-06-26 A |  | 100% |  | start no earlier than 2020-06-25 |
| 51 |  | 【紧急】更换电脑后map()在只有一个的时候挂死 | 4d | 2020-06-22 A | 2020-06-25 A |  | 100% |  | start no earlier than 2020-06-22 |
| 53 | 1.6 | **计划外任务** | 11d? | 2020-06-05 A | 2020-06-19 A |  | 100% |  |  |
| 54 |  | 【BUG】解决切换视野时toolkit导致崩溃的问题 | 2d | 2020-06-08 A | 2020-06-09 A |  | 100% |  |  |
| 55 |  | 【BUG】解决打开外周血崩溃的问题 | 1d | 2020-06-05 A | 2020-06-07 A |  | 100% |  | start no earlier than 2020-06-04 |
| 56 |  | 【BUG】解决内存泄露问题 | 2d | 2020-06-09 A | 2020-06-10 A |  | 100% |  | start no earlier than 2020-06-09 |
| 57 |  | 【BUG】外周血显示错误 | 1d | 2020-06-05 A | 2020-06-05 A |  | 100% |  | start no earlier than 2020-06-04 |
| 58 |  | 【BUG】点击CatalogView中的细胞崩溃 | 2d | 2020-06-08 A | 2020-06-09 A |  | 100% |  | start no earlier than 2020-06-09 |
| 59 |  | 【BUG】PageSize使用错误 | 1d? | 2020-06-19 A | 2020-06-19 A |  | 100% |  |  |
| 60 |  | 【BUG】新增细胞崩溃 | 1d? | 2020-06-19 A | 2020-06-19 A |  | 100% |  |  |
| 62 | 2 | **七月份工作计划** | 44d? | 2020-06-01 | 2020-07-31 |  |  | 0d |  |
| 63 |  | 开始 | 0d | 2020-07-01 | 2020-07-01 |  |  | 0d | must start on 2020-07-01 |
| 64 | 2.2 | **Service优化** | 5d | 2020-07-01 | 2020-07-07 | 63 |  | 17d |  |
| 65 |  | 解决多线程并发时报告警的问题 | 5d | 2020-07-01 | 2020-07-07 |  |  | 17d |  |
| 66 |  | 解决Qt5.12多线程不稳定的问题 | 5d | 2020-07-01 | 2020-07-07 |  |  | 17d |  |
| 68 | 2.3 | **Frame界面优化** | 5d | 2020-07-01 | 2020-07-07 | 63 |  | 17d |  |
| 69 |  | 适配连续外周血类别 | 1d | 2020-07-01 | 2020-07-01 |  |  | 17d |  |
| 70 |  | 增加状态栏 | 2d | 2020-07-02 | 2020-07-03 | 69 |  | 17d |  |
| 71 |  | 增加菜单和工具栏机制 | 2d | 2020-07-06 | 2020-07-07 | 70 |  | 17d |  |
| 72 |  | 彻底规避Qt TableView对proxyModel支持不好的bug | 5d | 2020-07-01 | 2020-07-07 |  |  | 17d |  |
| 74 | 2.4 | **日志优化** | 3d | 2020-06-01 | 2020-06-03 |  |  | 41d |  |
| 75 |  | 不同级别日志保存到不同的文件中 | 2d | 2020-06-01 | 2020-06-02 |  |  | 42d |  |
| 76 |  | 解决日志丢失问题 | 3d | 2020-06-01 | 2020-06-03 |  |  | 41d |  |

| ID | WBS | Task | Duration | Start | Finish | Predecessors | Total float | Constraint |
| --- | --- | --- | --- | --- | --- | --- | --- | --- |
| 78 | 2.5 | **AnalyzeWindow界面优化** | 2d | 2020-07-01 | 2020-07-02 | 63 | 20d |  |
| 79 |  | CatalogView放到Dock Window中 | 2d | 2020-07-01 | 2020-07-02 |  | 20d |  |
| 80 |  | ImageListView放到Dock Window中 | 2d | 2020-07-01 | 2020-07-02 |  | 20d |  |
| 82 | 2.6 | **ImageView优化** | 18d | 2020-07-01 | 2020-07-24 | 63 | 4d |  |
| 83 | 2.6.1 | **细胞标记和操作** | 12d | 2020-07-01 | 2020-07-16 |  | 10d |  |
| 84 |  | 细胞上下文菜单优化. 一级+二级 | 1d | 2020-07-01 | 2020-07-01 |  | 10d |  |
| 85 |  | 支持Toolkit中点击鼠标进行大图跳转 | 2d | 2020-07-02 | 2020-07-03 | 84 | 10d | start no earlier than 2020-07-01 |
| 86 |  | 解决外周血第一次显示时视野显示比例错误的问题 | 3d | 2020-07-06 | 2020-07-08 | 85 | 10d |  |
| 87 |  | 画细胞轮廓的优化处理 | 3d | 2020-07-09 | 2020-07-13 | 86 | 10d |  |
| 88 |  | 支持undo列表可查看 | 3d | 2020-07-14 | 2020-07-16 | 87 | 10d |  |
| 89 |  | 支持新增细胞在线分类 | 1d | 2020-07-01 | 2020-07-01 |  | 21d |  |
| 90 |  | CatalogView中细胞右上角显示改动标记，新增，修改，逻辑删除等标记 | 2d | 2020-07-01 | 2020-07-02 |  | 20d |  |
| 91 |  | 查看细胞的历史修改记录 | 5d | 2020-07-01 | 2020-07-07 |  | 17d |  |
| 92 |  | 细胞边界轮廓显示优化 | 2d | 2020-07-01 | 2020-07-02 |  | 20d |  |
| 94 | 2.6.2 | **显示比例尺** | 5d | 2020-07-10 | 2020-07-16 |  | 1d |  |
| 95 |  | 在ImageView中显示缩放比例 | 2d | 2020-07-10 | 2020-07-13 | 105 | 1d |  |
| 96 |  | 在ImageView中显示比例尺 | 3d | 2020-07-14 | 2020-07-16 | 95 | 1d |  |
| 98 | 2.6.3 | **支持Drag方式修改细胞类别** | 6d | 2020-07-17 | 2020-07-24 |  | 1d |  |
| 99 |  | 支持CatalogView中的细胞拖放 | 3d | 2020-07-17 | 2020-07-21 | 94 | 1d |  |
| 100 |  | 支持ImageView到CatalogView的细胞拖放 | 3d | 2020-07-22 | 2020-07-24 | 99 | 1d |  |
| 102 | 2.6.4 | **CatalogView优化** | 5d | 2020-07-01 | 2020-07-07 |  | 17d |  |
| 103 |  | 支持细胞过滤功能 | 5d | 2020-07-01 | 2020-07-07 |  | 17d |  |
| 105 | 2.7 | **和扫描软件融合** | 7d | 2020-07-01 | 2020-07-09 | 63 | -1d |  |
| 106 |  | 扫描软件启动客户端时, 跳过数据库连接选择 | 2d | 2020-07-01 | 2020-07-02 |  | -1d | start no earlier than 2020-07-01 |
| 107 |  | 增加任务状态查询功能? | 5d | 2020-07-03 | 2020-07-09 | 106 | -1d |  |
| 109 | 2.8 | **支持成熟红细胞分类显示** | 3d | 2020-07-27 | 2020-07-29 | 98 | 1d |  |
| 110 |  | 支持红细胞分类 | 1d | 2020-07-27 | 2020-07-27 |  | 1d |  |
| 111 |  | 支持红细胞视图显示 | 2d | 2020-07-28 | 2020-07-29 | 110 | 1d |  |
| 113 | 2.9 | **形态核型融合** | 7d | 2020-07-01 | 2020-07-09 | 63 | 15d |  |
| 114 |  | DeepLabel合入核型相关接口 | 5d | 2020-07-01 | 2020-07-07 |  | 15d |  |
| 115 |  | Frame中增加核型对应的Image页面 | 2d | 2020-07-08 | 2020-07-09 | 114 | 15d |  |
| 116 |  | 重构核型的分析窗口, 不再使用Dialog架构 | 7d | 2020-07-01 | 2020-07-09 |  | 15d |  |
| 118 |  | 重要BUG修正 | 1d? | 2020-07-01 | 2020-07-01 | 63 | 21d |  |
| 120 |  | 一般BUG修改 | 1d? | 2020-07-01 | 2020-07-01 | 63 | 21d |  |
| 122 | 2.12 | **形态客户端用户手册** | 8d | 2020-07-01 | 2020-07-10 |  | 14d |  |
| 123 |  | 拟定大纲 | 3d | 2020-07-01 | 2020-07-03 |  | 14d | start no earlier than 2020-07-01 |
| 124 |  | 文字手册 | 5d | 2020-07-06 | 2020-07-10 | 123 | 14d |  |
| 125 |  | 视频录像 | 5d | 2020-07-06 | 2020-07-10 | 123 | 14d |  |
| 127 | 2.13 | **版本发布** | 44d? | 2020-06-01 | 2020-07-31 |  | 0d |  |
| 128 | 2.13.1 | **V1R1C01C01B0701版本** | 2d | 2020-07-01 | 2020-07-02 |  | -2d |  |
| 129 |  | 版本测试 | 2d | 2020-07-01 | 2020-07-02 |  | -2d | start no earlier than 2020-07-01 |
| 130 |  | V1R1C01B0701发布 | 0d | 2020-07-01 | 2020-07-01 | 129 | -2d | must start on 2020-07-01 |
| 131 | 2.13.2 | **V1R1C01B0710版本** | 29d? | 2020-06-01 | 2020-07-09 |  |  |  |
| 132 |  | 版本测试 | 1d | 2020-07-10 | 2020-07-10 | 105 | -1d | start no earlier than 2020-07-09 |
| 133 |  | V1R1C01B0710发布(河北二院) | 0d | 2020-07-10 | 2020-07-10 | 132 | -1d | must start on 2020-07-10 |
| 134 | 2.13.3 | **V1R1C01B0720版本** | 1d | 2020-07-20 | 2020-07-20 |  | -1d |  |
| 135 |  | 版本测试 | 1d | 2020-07-20 | 2020-07-20 |  | -1d | start no earlier than 2020-07-19 |
| 136 |  | V1R1C01B0720发布 | 0d | 2020-07-20 | 2020-07-20 | 135 | -1d | must start on 2020-07-20 |
| 137 | 2.13.4 | **V1R1C01B0730版本** | 2d | 2020-07-29 | 2020-07-31 |  | 0d |  |
| 138 |  | 版本测试 | 1d | 2020-07-29 | 2020-07-29 |  | 1d | start no earlier than 2020-07-29 |
| 139 |  | V1R1C01B0730发布 | 0d | 2020-07-31 | 2020-07-31 | 138 | 0d | must start on 2020-07-31 |

## Version 2 (saved 2020-06-28, file PC端版本计划.202007.mpp)

Note of the change: 更新计划

Last finish stays 2020-07-31. Complete tasks 46 → 47.

Changed:

| ID | Task | Finish | Duration | Complete | Total float | Other |
| --- | --- | --- | --- | --- | --- | --- |
| 1 | **六月份工作计划** | 2020-06-29 → 2020-06-28 (-1d) | 21d? → 20d? | 94% → 97% | 23d → 24d |  |
| 2 | **通用优化** | 2020-06-29 → 2020-06-28 A (-1d) | 18d → 17d | 75% → 100% | 23d → none |  |
| 8 | 实现版本对话框 | 2020-06-29 → 2020-06-28 A (-1d) | 2d → 1d | 0% → 100% | 23d → none |  |
| 65 | **七月份工作计划** |  |  |  |  | baseline finish 2020-07-02 → 2020-07-31 |
| 66 | 开始 |  |  |  |  | baseline start none → 2020-07-01; baseline finish none → 2020-07-01 |
| 67 | **Service优化** |  |  |  |  | baseline start none → 2020-07-01; baseline finish none → 2020-07-07 |
| 68 | 解决多线程并发时报告警的问题 |  |  |  |  | baseline start none → 2020-07-01; baseline finish none → 2020-07-07 |
| 69 | 解决Qt5.12多线程不稳定的问题 |  |  |  |  | baseline start none → 2020-07-01; baseline finish none → 2020-07-07 |
| 71 | **Frame界面优化** |  |  |  |  | baseline start none → 2020-07-01; baseline finish none → 2020-07-07 |
| 72 | 适配连续外周血类别 |  |  |  |  | baseline start none → 2020-07-01; baseline finish none → 2020-07-01 |
| 73 | 增加状态栏 |  |  |  |  | baseline start none → 2020-07-02; baseline finish none → 2020-07-03 |
| 74 | 增加菜单和工具栏机制 |  |  |  |  | baseline start none → 2020-07-06; baseline finish none → 2020-07-07 |
| 75 | 彻底规避Qt TableView对proxyModel支持不好的bug |  |  |  |  | baseline start none → 2020-07-01; baseline finish none → 2020-07-07 |
| 77 | **日志优化** |  |  |  |  | baseline start none → 2020-06-01; baseline finish none → 2020-06-03 |
| 78 | 不同级别日志保存到不同的文件中 |  |  |  |  | baseline start none → 2020-06-01; baseline finish none → 2020-06-02 |
| 79 | 解决日志丢失问题 |  |  |  |  | baseline start none → 2020-06-01; baseline finish none → 2020-06-03 |
| 81 | **AnalyzeWindow界面优化** |  |  |  |  | baseline start none → 2020-07-01; baseline finish none → 2020-07-02 |
| 82 | CatalogView放到Dock Window中 |  |  |  |  | baseline start none → 2020-07-01; baseline finish none → 2020-07-02 |
| 83 | ImageListView放到Dock Window中 |  |  |  |  | baseline start none → 2020-07-01; baseline finish none → 2020-07-02 |
| 85 | **ImageView优化** |  |  |  |  | baseline start none → 2020-07-01; baseline finish none → 2020-07-24 |
| 86 | **细胞标记和操作** |  |  |  |  | baseline start none → 2020-07-01; baseline finish none → 2020-07-16 |
| 87 | 细胞上下文菜单优化. 一级+二级 |  |  |  |  | baseline start none → 2020-07-01; baseline finish none → 2020-07-01 |
| 88 | 支持Toolkit中点击鼠标进行大图跳转 |  |  |  |  | baseline start none → 2020-07-02; baseline finish none → 2020-07-03 |
| 89 | 解决外周血第一次显示时视野显示比例错误的问题 |  |  |  |  | baseline start none → 2020-07-06; baseline finish none → 2020-07-08 |
| 90 | 画细胞轮廓的优化处理 |  |  |  |  | baseline start none → 2020-07-09; baseline finish none → 2020-07-13 |
| 91 | 支持undo列表可查看 |  |  |  |  | baseline start none → 2020-07-14; baseline finish none → 2020-07-16 |
| 92 | 支持新增细胞在线分类 |  |  |  |  | baseline start none → 2020-07-01; baseline finish none → 2020-07-01 |
| 93 | CatalogView中细胞右上角显示改动标记，新增，修改，逻辑删除等标记 |  |  |  |  | baseline start none → 2020-07-01; baseline finish none → 2020-07-02 |
| 94 | 查看细胞的历史修改记录 |  |  |  |  | baseline start none → 2020-07-01; baseline finish none → 2020-07-07 |
| 95 | 细胞边界轮廓显示优化 |  |  |  |  | baseline start none → 2020-07-01; baseline finish none → 2020-07-02 |
| 97 | **显示比例尺** |  |  |  |  | baseline start none → 2020-07-10; baseline finish none → 2020-07-16 |
| 98 | 在ImageView中显示缩放比例 |  |  |  |  | baseline start 2020-06-01 → 2020-07-10; baseline finish 2020-06-01 → 2020-07-13 |
| 99 | 在ImageView中显示比例尺 |  |  |  |  | baseline start 2020-06-01 → 2020-07-14; baseline finish 2020-06-01 → 2020-07-16 |
| 101 | **支持Drag方式修改细胞类别** |  |  |  |  | baseline start 2020-06-01 → 2020-07-17; baseline finish 2020-06-01 → 2020-07-24 |
| 102 | 支持CatalogView中的细胞拖放 |  |  |  |  | baseline start 2020-06-01 → 2020-07-17; baseline finish 2020-06-01 → 2020-07-21 |
| 103 | 支持ImageView到CatalogView的细胞拖放 |  |  |  |  | baseline start 2020-06-01 → 2020-07-22; baseline finish 2020-06-01 → 2020-07-24 |
| 105 | **CatalogView优化** |  |  |  |  | baseline start none → 2020-07-01; baseline finish none → 2020-07-07 |
| 106 | 支持细胞过滤功能 |  |  |  |  | baseline start none → 2020-07-01; baseline finish none → 2020-07-07 |
| 108 | **和扫描软件融合** |  |  |  |  | baseline finish 2020-07-02 → 2020-07-09 |
| 110 | 增加任务状态查询功能? |  |  |  |  | baseline start none → 2020-07-03; baseline finish none → 2020-07-09 |
| 112 | **支持成熟红细胞分类显示** |  |  |  |  | baseline start 2020-06-01 → 2020-07-27; baseline finish 2020-06-01 → 2020-07-29 |
| 113 | 支持红细胞分类 |  |  |  |  | baseline start none → 2020-07-27; baseline finish none → 2020-07-27 |
| 114 | 支持红细胞视图显示 |  |  |  |  | baseline start none → 2020-07-28; baseline finish none → 2020-07-29 |
| 116 | **形态核型融合** |  |  |  |  | baseline start none → 2020-07-01; baseline finish none → 2020-07-09 |
| 117 | DeepLabel合入核型相关接口 |  |  |  |  | baseline start none → 2020-07-01; baseline finish none → 2020-07-07 |
| 118 | Frame中增加核型对应的Image页面 |  |  |  |  | baseline start none → 2020-07-08; baseline finish none → 2020-07-09 |
| 119 | 重构核型的分析窗口, 不再使用Dialog架构 |  |  |  |  | baseline start none → 2020-07-01; baseline finish none → 2020-07-09 |
| 121 | 重要BUG修正 |  |  |  |  | baseline start none → 2020-07-01; baseline finish none → 2020-07-01 |
| 123 | 一般BUG修改 |  |  |  |  | baseline start none → 2020-07-01; baseline finish none → 2020-07-01 |
| 125 | **形态客户端用户手册** |  |  |  |  | baseline start none → 2020-07-01; baseline finish none → 2020-07-10 |
| 126 | 拟定大纲 |  |  |  |  | baseline start none → 2020-07-01; baseline finish none → 2020-07-03 |
| 127 | 文字手册 |  |  |  |  | baseline start none → 2020-07-06; baseline finish none → 2020-07-10 |
| 128 | 视频录像 |  |  |  |  | baseline start none → 2020-07-06; baseline finish none → 2020-07-10 |
| 130 | **版本发布** |  |  |  |  | baseline start none → 2020-06-01; baseline finish none → 2020-07-31 |
| 131 | **V1R1C01C01B0701版本** |  |  |  |  | baseline start none → 2020-07-01; baseline finish none → 2020-07-02 |
| 132 | 版本测试 |  |  |  |  | baseline start none → 2020-07-01; baseline finish none → 2020-07-02 |
| 133 | V1R1C01B0701发布 |  |  |  |  | baseline start none → 2020-07-01; baseline finish none → 2020-07-01 |
| 134 | **V1R1C01B0710版本** |  |  |  |  | baseline start none → 2020-06-01; baseline finish none → 2020-07-09 |
| 135 | 版本测试 |  |  |  |  | baseline start none → 2020-07-10; baseline finish none → 2020-07-10 |
| 136 | V1R1C01B0710发布(河北二院) |  |  |  |  | baseline start none → 2020-07-10; baseline finish none → 2020-07-10 |
| 137 | **V1R1C01B0720版本** |  |  |  |  | baseline start none → 2020-07-20; baseline finish none → 2020-07-20 |
| 138 | 版本测试 |  |  |  |  | baseline start none → 2020-07-20; baseline finish none → 2020-07-20 |
| 139 | V1R1C01B0720发布 |  |  |  |  | baseline start none → 2020-07-20; baseline finish none → 2020-07-20 |
| 140 | **V1R1C01B0730版本** |  |  |  |  | baseline start none → 2020-07-29; baseline finish none → 2020-07-31 |
| 141 | 版本测试 |  |  |  |  | baseline start none → 2020-07-29; baseline finish none → 2020-07-29 |
| 142 | V1R1C01B0730发布 |  |  |  |  | baseline start none → 2020-07-31; baseline finish none → 2020-07-31 |

## Version 3 (saved 2020-06-30, file PC端版本计划.202007.mpp)

Note of the change: 计划刷新

Last finish stays 2020-07-31. Complete tasks 47 → 53.

Added:

| ID | Task | Duration | Start | Finish | Constraint | Resources |
| --- | --- | --- | --- | --- | --- | --- |
| 125 | ImageView和CatalogView中的颜色不一致 | 1d? | 2020-07-01 A | 2020-07-01 A |  |  |
| 127 | **扫描仪接口文档** | 5d | 2020-07-01 | 2020-07-07 |  |  |
| 128 | 扫描仪接口文档 | 5d | 2020-07-01 | 2020-07-07 | start no earlier than 2020-07-01 | 薛松 |

Changed:

| ID | Task | Start | Finish | Duration | Complete | Total float |
| --- | --- | --- | --- | --- | --- | --- |
| 1 | **六月份工作计划** |  | 2020-06-28 → 2020-06-30 A (+2d) | 20d? → 22d? | 97% → 100% | 24d → none |
| 9 | **Image页面中支持对细胞的操作** |  | 2020-06-18 → 2020-06-30 A (+12d) | 13d? → 21d? | 83% → 100% | 30d → none |
| 17 | CatalogView中双击细胞在ImageView中跳转 | 2020-06-17 → 2020-06-01 A (-16d) | 2020-06-17 → 2020-06-01 A (-16d) | 1d → 0d | 0% → 100% | 30d → none |
| 18 | ImageView中双击细胞在CatalogView中跳转 | 2020-06-18 → 2020-06-02 A (-16d) | 2020-06-18 → 2020-06-30 A (+12d) | 1d → 21d | 0% → 100% | 30d → none |
| 65 | **七月份工作计划** | 2020-06-01 A |  |  | 0% → 4% |  |
| 67 | **Service优化** | 2020-07-01 A |  |  | 0% → 17% |  |
| 69 | 解决Qt5.12多线程不稳定的问题 | 2020-07-01 A | 2020-07-07 → 2020-07-01 A (-6d) | 5d → 1d | 0% → 100% | 17d → none |
| 123 | **一般BUG修改** | 2020-07-01 A | 2020-07-01 A |  | 0% → 100% | 21d → none |
| 131 | **形态客户端用户手册** | 2020-07-01 A | 2020-07-10 → 2020-07-08 (-2d) | 8d → 6d | 0% → 9% | 14d → 16d |
| 132 | 拟定大纲 | 2020-07-01 A | 2020-07-03 → 2020-07-01 A (-2d) | 3d → 1d | 0% → 100% | 14d → none |
| 133 | 文字手册 | 2020-07-06 → 2020-07-02 (-4d) | 2020-07-10 → 2020-07-08 (-2d) |  |  | 14d → 16d |
| 134 | 视频录像 | 2020-07-06 → 2020-07-02 (-4d) | 2020-07-10 → 2020-07-08 (-2d) |  |  | 14d → 16d |
| 136 | **版本发布** | 2020-06-01 A |  |  | 0% → 17% |  |
| 137 | **V1R1C01C01B0701版本** | 2020-07-01 → 2020-06-30 A (-1d) |  | 2d → 3d | 0% → 33% | -2d → 20d |
| 138 | 版本测试 | 2020-07-01 A |  |  |  | -2d → 20d |
| 139 | V1R1C01B0701发布 | 2020-07-01 → 2020-06-30 A (-1d) | 2020-07-01 → 2020-06-30 A (-1d) | 0d → 1d | 0% → 100% | -2d → none |
